# GFURR.BBS.Master.Plan

Schedule from MS Project, 2018-02-02 to 2018-04-20.

## Calendars

- Standard: Mon-Fri 08:00-12:00, 13:00-17:00; Sat-Sun off.

## Resources

| Resource |
| --- |
| Christine |
| FRC Team |
| David |
| Dan |
| Simone |
| Dan and Simone |
| Ben |
| Yao |
| Davon |

## Schedule

| ID | WBS | Task | Type | Duration | Start | Finish | Predecessors | Total slack | Resources | Work |
| --- | --- | --- | --- | --- | --- | --- | --- | --- | --- | --- |
| 2 | 1 | **Location Logistics** |  | 8d | 2018-02-05 | 2018-02-14 |  | 0d |  | 136h |
| 3 | 1.1 | Location - Reserve on Lyric | manual | 5d | 2018-02-05 | 2018-02-09 |  |  | Christine; Dan | 80h |
| 4 | 1.2 | Location -Site Visit | manual | 1d | 2018-02-14 | 2018-02-14 | 5 |  | FRC Team | 8h |
| 5 | 1.3 | Location - Sign Contract | manual | 3d | 2018-02-08 | 2018-02-12 | 3 |  | David; Christine | 48h |
| 6 | 2 | **Summit Speakers** |  | 41d | 2018-02-05 | 2018-04-02 |  | 0d | Dan; Simone | 1816h |
| 7 | 2.1 | Speakers - Round 1 Invitations | manual | 1d | 2018-02-05 | 2018-02-05 |  |  | Dan; Simone | 16h |
| 8 | 2.2 | Speakers -Invitation Follow-up | manual | 9d | 2018-02-05 | 2018-02-15 | 7 |  | Dan; Simone | 144h |
| 9 | 2.3 | Speakers - Round 2 Invitations | manual | 1d | 2018-02-19 | 2018-02-19 |  |  | Dan; Simone | 16h |
| 10 | 2.4 | Speakers - Invitation Follow-up | manual | 10d | 2018-02-19 | 2018-03-02 | 9 |  | Dan; Simone | 160h |
| 11 | 2.5 | Speakers -Round 3 Invitations | manual | 1d | 2018-03-05 | 2018-03-05 |  |  | Dan; Simone | 16h |
| 12 | 2.6 | Speakers - Invitation Follow-up | manual | 10d | 2018-03-05 | 2018-03-16 | 11 |  | Dan; Simone | 160h |
| 13 | 2.7 | Speakers -Speaker Travel Logisitics | manual | 41d | 2018-02-05 | 2018-04-02 |  |  | Christine | 328h |
| 14 | 2.8 | Speakers - Speaker Bios and Photos | manual | 40d | 2018-02-05 | 2018-03-30 |  |  | Dan and Simone | 320h |
| 15 | 3 | **Media Design** |  | 41d | 2018-02-02 | 2018-03-30 |  | 0d | FRC Team | 1608h |
| 16 | 3.1 | **Contract Position Logistics** |  | 8d | 2018-02-02 | 2018-02-13 |  | 0d | Ben; Yao | 192h |
| 17 | 3.1.1 | Media - Web, Video and Grphx Job Descriptions | manual | 2d | 2018-02-02 | 2018-02-05 |  |  | Ben | 16h |
| 18 | 3.1.2 | Media - Designer Submission | manual | 1d | 2018-02-05 | 2018-02-05 |  |  | Ben; Yao | 16h |
| 19 | 3.1.3 | Media -Designer Review and Selection | manual | 2d | 2018-02-12 | 2018-02-13 |  |  | Ben; Yao | 32h |
| 20 | 3.2 | **Graphic Design** |  | 34d | 2018-02-13 | 2018-03-30 |  | 0d | Ben | 792h |
| 21 | 3.2.1 | Graphic - Finalize List of Graphic Design Needs | manual | 1d | 2018-02-13 | 2018-02-13 |  |  | Ben | 8h |
| 22 | 3.2.2 | Graphic - Meet with Designer | manual | 3d | 2018-02-14 | 2018-02-16 | 19, 21, 32 |  | Ben | 24h |
| 23 | 3.2.3 | Graphic - Logo Design Process | manual | 6d | 2018-02-19 | 2018-02-26 | 22 |  | Ben | 48h |
| 24 | 3.2.4 | Graphic - Logo Final Approval | manual | 1d | 2018-02-27 | 2018-02-27 | 23 |  | Ben | 8h |
| 25 | 3.2.5 | **Video** |  | 34d | 2018-02-13 | 2018-03-30 |  | 0d | Ben | 432h |
| 26 | 3.2.5.1 | Video - Finalize List of Video | manual | 1d | 2018-02-13 | 2018-02-13 |  |  | Ben | 8h |
| 27 | 3.2.5.2 | Video - Meet with Videographer | manual | 3d | 2018-02-19 | 2018-02-21 | 19, 26, 32 |  | Ben | 24h |
| 28 | 3.2.5.3 | Video - Pre-Event Shoots | manual | 15d | 2018-03-12 | 2018-03-30 | 27 |  | Ben | 120h |
| 29 | 3.2.5.4 | Video - Logo Final Approval | manual | 1d | 2018-02-27 | 2018-02-27 | 28 |  | Ben | 8h |

| ID | WBS | Task | Type | Duration | Start | Finish | Predecessors | Total slack | Constraint | Resources | Work |
| --- | --- | --- | --- | --- | --- | --- | --- | --- | --- | --- | --- |
| 30 | 3.3 | **Website Design** |  | 18d | 2018-02-05 | 2018-02-28 |  | 0d |  | FRC Team | 296h |
| 31 | 3.3.1 | Website - Domain Purchase | manual | 5d | 2018-02-05 | 2018-02-09 |  |  |  | David | 40h |
| 32 | 3.3.2 | Website - Finalize List of Web Design Needs | manual | 1d | 2018-02-09 | 2018-02-09 |  |  |  | FRC Team | 8h |
| 33 | 3.3.3 | Website - Website Design Process | manual | 11d | 2018-02-12 | 2018-02-26 |  |  |  | Yao | 88h |
| 34 | 3.3.4 | Website - Website Final Approval | manual | 1d | 2018-02-27 | 2018-02-27 | 33 |  |  | Yao | 8h |
| 35 | 3.3.5 | Website Launch | manual | 1d | 2018-02-28 | 2018-02-28 | 34, 37 |  |  | Yao | 8h |
| 36 | 4 | **Registration** |  | 38d | 2018-02-21 | 2018-04-13 |  | 0d |  | Yao | 648h |
| 37 | 4.1 | Reg- Registration Form Finalization | manual | 5d | 2018-02-21 | 2018-02-27 |  |  |  | Yao | 40h |
| 38 | 4.2 | **Reg- Registration Report** |  | 31d | 2018-03-02 | 2018-04-13 | 37 | 0d |  | Yao | 304h |
| 39 | 4.2.1 | Reg- Registration Report 1 | manual | 1d | 2018-03-02 | 2018-03-02 |  |  | start no earlier than 2018-03-02 | Yao | 8h |
| 40 | 4.2.2 | Reg- Registration Report 2 | manual | 1d | 2018-03-09 | 2018-03-09 |  |  | start no earlier than 2018-03-09 | Yao | 8h |
| 41 | 4.2.3 | Reg- Registration Report 3 | manual | 1d | 2018-03-16 | 2018-03-16 |  |  | start no earlier than 2018-03-16 | Yao | 8h |
| 42 | 4.2.4 | Reg- Registration Report 4 | manual | 1d | 2018-03-23 | 2018-03-23 |  |  | start no earlier than 2018-03-23 | Yao | 8h |
| 43 | 4.2.5 | Reg- Registration Report 5 | manual | 1d | 2018-03-30 | 2018-03-30 |  |  | start no earlier than 2018-03-30 | Yao | 8h |
| 44 | 4.2.6 | Reg- Registration Report 6 | manual | 1d | 2018-04-06 | 2018-04-06 |  |  | start no earlier than 2018-04-06 | Yao | 8h |
| 45 | 4.2.7 | Reg- Registration Report 7 | manual | 1d | 2018-04-13 | 2018-04-13 |  |  | start no earlier than 2018-04-13 | Yao | 8h |
| 46 | 5 | **Marketing, Outeach, Communications** |  | 53d | 2018-02-05 | 2018-04-18 |  | 0d |  | Davon | 7520h |
| 47 | 5.1 | **M&O- Marketing and Outreach** |  | 53d | 2018-02-05 | 2018-04-18 |  | 0d |  | Davon | 4664h |
| 48 | 5.1.1 | **M&O Verbiage** |  | 13d | 2018-02-12 | 2018-02-28 |  | 0d |  | FRC Team | 472h |
| 49 | 5.1.1.1 | M&O- "Save the Date" Verbiage | manual | 1d | 2018-02-12 | 2018-02-12 |  |  |  | Davon | 8h |
| 50 | 5.1.1.2 | M&O - "Save the Date" Release | manual | 1d | 2018-02-14 | 2018-02-14 |  |  |  | FRC Team | 8h |
| 51 | 5.1.1.3 | M&O- Press Release | manual | 11d | 2018-02-14 | 2018-02-28 |  |  |  | Davon; Simone | 176h |
| 52 | 5.1.1.4 | M&O- Blurbs, General (Bus., Uni., Comm.) | manual | 11d | 2018-02-14 | 2018-02-28 |  |  |  | Ben | 88h |
| 53 | 5.1.1.5 | M&O- Social Media Verbiage | manual | 11d | 2018-02-14 | 2018-02-28 |  |  |  | Ben | 88h |

| ID | WBS | Task | Type | Duration | Start | Finish | Predecessors | Total slack | Free slack | Constraint | Resources | Work |
| --- | --- | --- | --- | --- | --- | --- | --- | --- | --- | --- | --- | --- |
| 54 | 5.1.2 | **M&O - Press Outeach** |  | 52d | 2018-02-06 | 2018-04-18 |  | 0d |  |  | Davon | 888h |
| 55 | 5.1.2.1 | M&O- Press List | manual | 17d | 2018-02-06 | 2018-02-28 |  |  |  |  | Davon | 136h |
| 56 | 5.1.2.2 | M&O- Advertising Plan | manual | 17d | 2018-02-06 | 2018-02-28 |  |  |  |  | Davon; Yao | 272h |
| 57 | 5.1.2.3 | M&O - Press Outeach 1 | manual | 1d | 2018-03-01 | 2018-03-01 | 55 |  |  | start no earlier than 2018-02-28 | Davon | 8h |
| 58 | 5.1.2.4 | M&O - Press Outeach 2 | manual | 1d | 2018-03-14 | 2018-03-14 |  |  |  | start no earlier than 2018-03-14 | Davon | 8h |
| 59 | 5.1.2.5 | M&O - Press Outeach 3 | manual | 1d | 2018-03-28 | 2018-03-28 |  |  |  | start no earlier than 2018-03-28 | Davon | 8h |
| 60 | 5.1.2.6 | M&O - Press Outeach 4 | manual | 1d | 2018-04-11 | 2018-04-11 |  |  |  | start no earlier than 2018-04-11 | Davon | 8h |
| 61 | 5.1.2.7 | M&O- Press Outeach 5 | manual | 1d | 2018-04-16 | 2018-04-16 |  |  |  |  | Davon | 8h |
| 62 | 5.1.2.8 | M&O - Press Packets | manual | 3d | 2018-04-16 | 2018-04-18 |  |  |  |  | Davon | 24h |
| 63 | 5.1.3 | **M&O - Regional University Outeach** |  | 51d | 2018-02-05 | 2018-04-16 |  | 3d |  |  | Dan | 600h |
| 64 | 5.1.3.1 | M&O- Regional University List |  | 18d | 2018-02-05 | 2018-02-28 |  | 36d | 0d | start no earlier than 2018-02-05 | Dan | 144h |
| 65 | 5.1.3.2 | M&O- Regional University STD | manual | 1d | 2018-02-14 | 2018-02-14 |  |  |  |  | Dan | 8h |
| 66 | 5.1.3.3 | M&O - Regional University Outeach 1 | manual | 1d | 2018-03-01 | 2018-03-01 | 64 |  |  | start no earlier than 2018-02-28 | Dan | 8h |
| 67 | 5.1.3.4 | M&O - Regional University Outeach 2 | manual | 1d | 2018-03-14 | 2018-03-14 |  |  |  | start no earlier than 2018-03-14 | Dan | 8h |
| 68 | 5.1.3.5 | M&O - Regional University Outeach 3 | manual | 1d | 2018-03-28 | 2018-03-28 |  |  |  | start no earlier than 2018-03-28 | Dan | 8h |
| 69 | 5.1.3.6 | M&O - Regional University Outeach 4 | manual | 1d | 2018-04-11 | 2018-04-11 |  |  |  | start no earlier than 2018-04-11 | Dan | 8h |
| 70 | 5.1.3.7 | M&O- Regional University Outreach 5 | manual | 1d | 2018-04-16 | 2018-04-16 |  |  |  |  | Dan | 8h |
| 71 | 5.1.4 | **M&O- VT and NRV Outreach** |  | 48d | 2018-02-05 | 2018-04-11 |  | 0d |  |  | Dan; Davon | 1136h |
| 72 | 5.1.4.1 | M&O- VT and NRV List | manual | 18d | 2018-02-05 | 2018-02-28 |  |  |  |  | Dan; Davon | 288h |
| 73 | 5.1.4.2 | M&O- VT and NRV STD | manual | 1d | 2018-02-14 | 2018-02-14 |  |  |  |  | Dan; Davon | 16h |
| 74 | 5.1.4.3 | M&O- VT and NRV Outreach 1 | manual | 1d | 2018-03-01 | 2018-03-01 | 72 |  |  | start no earlier than 2018-02-28 | Dan; Davon | 16h |
| 75 | 5.1.4.4 | M&O- VT and NRV Outreach 2 | manual | 1d | 2018-03-14 | 2018-03-14 |  |  |  | start no earlier than 2018-03-14 | Dan; Davon | 16h |
| 76 | 5.1.4.5 | M&O- VT and NRV Outreach 3 | manual | 1d | 2018-03-28 | 2018-03-28 |  |  |  | start no earlier than 2018-03-28 | Dan; Davon | 16h |
| 77 | 5.1.4.6 | M&O- VT and NRV Outreach 4 | manual | 1d | 2018-04-11 | 2018-04-11 |  |  |  | start no earlier than 2018-04-11 | Dan; Davon | 16h |

| ID | WBS | Task | Type | Duration | Start | Finish | Predecessors | Total slack | Constraint | Resources | Work |
| --- | --- | --- | --- | --- | --- | --- | --- | --- | --- | --- | --- |
| 78 | 5.1.5 | **M&O- Business Outreach** |  | 48d | 2018-02-05 | 2018-04-11 |  | 0d |  | Simone | 576h |
| 79 | 5.1.5.1 | M&O- Business List | manual | 18d | 2018-02-05 | 2018-02-28 |  |  |  | Simone | 144h |
| 80 | 5.1.5.2 | M&O- Business STD | manual | 1d | 2018-02-14 | 2018-02-14 |  |  |  | Dan; Davon | 16h |
| 81 | 5.1.5.3 | M&O- Business Outreach 1 | manual | 1d | 2018-03-01 | 2018-03-01 | 79 |  | start no earlier than 2018-02-28 | Simone | 8h |
| 82 | 5.1.5.4 | M&O- Business Outreach 2 | manual | 1d | 2018-03-14 | 2018-03-14 |  |  | start no earlier than 2018-03-14 | Simone | 8h |
| 83 | 5.1.5.5 | M&O- Business Outreach 3 | manual | 1d | 2018-03-28 | 2018-03-28 |  |  | start no earlier than 2018-03-28 | Simone | 8h |
| 84 | 5.1.5.6 | M&O- Business Outreach 4 | manual | 1d | 2018-04-11 | 2018-04-11 |  |  | start no earlier than 2018-04-11 | Simone | 8h |
| 85 | 5.1.6 | **M&O - Social Media** |  | 48d | 2018-02-05 | 2018-04-11 |  | 0d |  | Ben | 568h |
| 86 | 5.1.6.1 | M&O- Social Media List and Acct. Creation | manual | 18d | 2018-02-05 | 2018-02-28 |  |  |  | Ben | 144h |
| 87 | 5.1.6.2 | M&O- Social Media STD | manual | 1d | 2018-02-14 | 2018-02-14 |  |  |  | Ben | 8h |
| 88 | 5.1.6.3 | M&O - Social Media 1 | manual | 1d | 2018-02-28 | 2018-02-28 |  |  | start no earlier than 2018-02-28 | Ben | 8h |
| 89 | 5.1.6.4 | M&O - Social Media 2 | manual | 1d | 2018-03-14 | 2018-03-14 |  |  | start no earlier than 2018-03-14 | Ben | 8h |
| 90 | 5.1.6.5 | M&O - Social Media 3 | manual | 1d | 2018-03-28 | 2018-03-28 |  |  | start no earlier than 2018-03-28 | Ben | 8h |
| 91 | 5.1.6.6 | M&O - Social Media 4 | manual | 1d | 2018-04-11 | 2018-04-11 |  |  | start no earlier than 2018-04-11 | Ben | 8h |
| 92 | 5.2 | **Co-Sponsors** |  | 17d | 2018-02-05 | 2018-02-27 |  | 0d |  | FRC Team | 480h |
| 93 | 5.2.1 | Co-Sponsor List | manual | 1d | 2018-02-05 | 2018-02-05 |  |  |  | Dan; Simone; Davon | 24h |
| 94 | 5.2.2 | Co-Sponsor Letter | manual | 1d | 2018-02-07 | 2018-02-07 |  |  |  | Davon | 8h |
| 95 | 5.2.3 | Co-Sponsor Outreach | manual | 13d | 2018-02-09 | 2018-02-27 |  |  |  | Dan; Simone; Davon | 312h |
| 96 | 5.3 | **M&C - Communications** |  | 46d | 2018-02-14 | 2018-04-18 |  | 0d |  | Yao; Ben | 1952h |
| 97 | 5.3.1 | M&C- Registration Reponses Verbiage | manual | 10d | 2018-02-14 | 2018-02-27 |  |  |  | Yao | 80h |
| 98 | 5.3.2 | **M&C - Verbiage** |  | 27d | 2018-03-12 | 2018-04-17 |  | 0d |  | Yao; Ben | 624h |
| 99 | 5.3.2.1 | M&C - Verbiage 1 | manual | 2d | 2018-03-12 | 2018-03-13 |  |  | start no earlier than 2018-03-12 | Yao; Ben | 32h |
| 100 | 5.3.2.2 | M&C - Verbiage 2 | manual | 2d | 2018-03-19 | 2018-03-20 |  |  | start no earlier than 2018-03-19 | Yao; Ben | 32h |
| 101 | 5.3.2.3 | M&C - Verbiage 3 | manual | 2d | 2018-03-26 | 2018-03-27 |  |  | start no earlier than 2018-03-26 | Yao; Ben | 32h |
| 102 | 5.3.2.4 | M&C - Verbiage 4 | manual | 2d | 2018-04-02 | 2018-04-03 |  |  | start no earlier than 2018-04-02 | Yao; Ben | 32h |
| 103 | 5.3.2.5 | M&C - Verbiage 5 | manual | 2d | 2018-04-09 | 2018-04-10 |  |  | start no earlier than 2018-04-09 | Yao; Ben | 32h |
| 104 | 5.3.2.6 | M&C - Verbiage 6 | manual | 2d | 2018-04-16 | 2018-04-17 |  |  | start no earlier than 2018-04-16 | Yao; Ben | 32h |

| ID | WBS | Task | Type | Duration | Start | Finish | Total slack | Constraint | Resources | Work |
| --- | --- | --- | --- | --- | --- | --- | --- | --- | --- | --- |
| 105 | 5.3.3 | **M&C- SM/Email/Website Update Comm.** |  | 26d | 2018-03-14 | 2018-04-18 | 0d |  | Yao; Ben | 512h |
| 106 | 5.3.3.1 | M&C- SM/Email/Website Update Comm. 1 | manual | 1d | 2018-03-14 | 2018-03-14 |  | start no earlier than 2018-03-14 | Yao; Ben | 16h |
| 107 | 5.3.3.2 | M&C- SM/Email/Website Update Comm. 2 | manual | 1d | 2018-03-21 | 2018-03-21 |  | start no earlier than 2018-03-21 | Yao; Ben | 16h |
| 108 | 5.3.3.3 | M&C- SM/Email/Website Update Comm. 3 | manual | 1d | 2018-03-28 | 2018-03-28 |  | start no earlier than 2018-03-28 | Yao; Ben | 16h |
| 109 | 5.3.3.4 | M&C- SM/Email/Website Update Comm. 4 | manual | 1d | 2018-04-04 | 2018-04-04 |  | start no earlier than 2018-04-04 | Yao; Ben | 16h |
| 110 | 5.3.3.5 | M&C- SM/Email/Website Update Comm. 5 | manual | 1d | 2018-04-11 | 2018-04-11 |  | start no earlier than 2018-04-11 | Yao; Ben | 16h |
| 111 | 5.3.3.6 | M&C- SM/Email/Website Update Comm. 6 | manual | 1d | 2018-04-18 | 2018-04-18 |  | start no earlier than 2018-04-18 | Yao; Ben | 16h |
| 112 | 6 | **Food Services** |  | 27d | 2018-02-23 | 2018-04-02 | 0d |  | Christine | 248h |
| 113 | 6.1 | FS- Reservation, Thursday Dinner | manual | 1d | 2018-02-23 | 2018-02-23 |  |  | Christine | 8h |
| 114 | 6.2 | FS- Reservation, Thursday Dinner Final Count | manual | 1d | 2018-04-02 | 2018-04-02 |  |  | Christine | 8h |
| 115 | 6.3 | FS - Food, Friday, Order | manual | 1d | 2018-02-23 | 2018-02-23 |  |  | Christine | 8h |
| 116 | 6.4 | FS - Food, Friday, Final Count | manual | 1d | 2018-04-02 | 2018-04-02 |  |  | Christine | 8h |
| 117 | 7 | **Hotel Services** |  | 27d | 2018-02-23 | 2018-04-02 | 0d |  | Christine | 232h |
| 118 | 7.1 | HS - Hotel Block Reservation | manual | 1d | 2018-02-23 | 2018-02-23 |  |  | Christine | 8h |
| 119 | 7.2 | HS- Hotel Block, Final Count | manual | 1d | 2018-04-02 | 2018-04-02 |  |  | Christine | 8h |
| 120 | 8 | Day of Event (Thursday) | manual | 1d | 2018-04-19 | 2018-04-19 |  |  | FRC Team | 8h |
| 121 | 9 | Day of Event (Friday) | manual | 1d | 2018-04-20 | 2018-04-20 |  |  | FRC Team | 8h |
